| id | name | schedule の作業 | 種類 | start | finish | 日数 | 工法 | 先行 | 施工単位 |
| --- | --- | --- | --- | --- | --- | --- | --- | --- | --- |
| TK-001 | 準備工事 | site | 建てる | 2008-07-14 | 2008-08-30 | 42 | MT-09 |  |  |
| TK-002 | 脚と心柱の基礎 | found | 建てる | 2008-09-01 | 2009-04-06 | 187 | MT-01 | TK-001 | WU-001 |
| TK-003 | 鉄骨 0–21 m | steel-01 | 建てる | 2009-04-07 | 2009-05-02 | 23 | MT-02 | TK-002 | WU-002 |
| TK-004 | 鉄骨 21–42 m | steel-03 | 建てる | 2009-05-04 | 2009-05-28 | 22 | MT-02 | TK-003 | WU-003 |
| TK-005 | 鉄骨 42–63 m | steel-05 | 建てる | 2009-05-29 | 2009-06-22 | 21 | MT-02 | TK-004 | WU-004 |
| TK-006 | 鉄骨 63–84 m | steel-07 | 建てる | 2009-06-23 | 2009-07-18 | 23 | MT-02 | TK-005 | WU-005 |
| TK-007 | 鉄骨 84–105 m | steel-09 | 建てる | 2009-07-20 | 2009-08-11 | 20 | MT-02 | TK-006 | WU-006 |
| TK-008 | 鉄骨 105–126 m | steel-11 | 建てる | 2009-08-12 | 2009-08-31 | 17 | MT-02 | TK-007 | WU-007 |
| TK-009 | 鉄骨 126–147 m | steel-13 | 建てる | 2009-09-01 | 2009-09-19 | 17 | MT-02 | TK-008 | WU-008 |
| TK-010 | 鉄骨 147–168 m | steel-15 | 建てる | 2009-09-21 | 2009-10-09 | 17 | MT-02 | TK-009 | WU-009 |
| TK-011 | 鉄骨 168–188 m | steel-17 | 建てる | 2009-10-10 | 2009-10-29 | 17 | MT-03 | TK-010 | WU-010 |
| TK-012 | 鉄骨 188–209 m | steel-19 | 建てる | 2009-10-30 | 2009-11-18 | 17 | MT-03 | TK-011 | WU-011 |
| TK-013 | 鉄骨 209–230 m | steel-21 | 建てる | 2009-11-19 | 2009-12-08 | 17 | MT-03 | TK-012 | WU-012 |
| TK-014 | 鉄骨 230–251 m | steel-23 | 建てる | 2009-12-09 | 2009-12-29 | 18 | MT-03 | TK-013 | WU-013 |
| TK-015 | 鉄骨 251–272 m | steel-25 | 建てる | 2009-12-30 | 2010-01-18 | 17 | MT-03 | TK-014 | WU-014 |
| TK-016 | 鉄骨 272–293 m | steel-27 | 建てる | 2010-01-19 | 2010-02-08 | 18 | MT-03 | TK-015 | WU-015 |
| TK-017 | 鉄骨 293–314 m | steel-29 | 建てる | 2010-02-09 | 2010-03-02 | 19 | MT-03 | TK-016 | WU-016 |
| TK-018 | 鉄骨 314–335 m | steel-31 | 建てる | 2010-03-03 | 2010-03-24 | 19 | MT-03 | TK-017 | WU-017 |
| TK-019 | 350 m の展望台の柱と環 | deck1-steel | 建てる | 2010-03-25 | 2010-04-16 | 20 | MT-04 | TK-018 | WU-018 |
| TK-020 | 鉄骨 355–376 m | steel-33 | 建てる | 2010-04-17 | 2010-05-28 | 36 | MT-03 | TK-019 | WU-019 |
| TK-021 | 鉄骨 376–398 m | steel-35 | 建てる | 2010-05-29 | 2010-07-01 | 29 | MT-03 | TK-020 | WU-020 |
| TK-022 | 鉄骨 398–419 m | steel-37 | 建てる | 2010-07-02 | 2010-07-31 | 26 | MT-03 | TK-021 | WU-021 |
| TK-023 | 鉄骨 419–440 m | steel-39 | 建てる | 2010-08-02 | 2010-08-19 | 16 | MT-03 | TK-022 | WU-022 |
| TK-024 | 450 m の展望台の柱と環 | deck2-steel | 建てる | 2010-08-20 | 2010-09-06 | 15 | MT-04 | TK-023 | WU-023 |
| TK-025 | 鉄骨 460–478 m | steel-41 | 建てる | 2010-09-07 | 2010-09-27 | 18 | MT-03 | TK-024 | WU-024 |
| TK-026 | 鉄骨 478–495 m | steel-43 | 建てる | 2010-09-28 | 2010-10-16 | 17 | MT-03 | TK-025 | WU-025 |
| TK-027 | 塔体の鉄骨 497 m | steel-top | 節目 | 2010-10-18 | 2010-10-18 | 0 | MT-03 | TK-026 |  |
| TK-028 | ゲイン塔 第7節を吹き抜けの底に据える | set-mast-7 | 建てる | 2010-10-18 | 2010-10-23 | 6 | MT-05 | TK-027 | WU-026 |
| TK-029 | ゲイン塔を 19.9 m 押し上げる | jack-mast-7 | 引き上げ 19.9 m | 2010-10-25 | 2010-10-26 | 2 | MT-05 | TK-028 | WU-026 |
| TK-030 | ゲイン塔 第6節を吹き抜けの底に据える | set-mast-6 | 建てる | 2010-10-27 | 2010-11-02 | 6 | MT-05 | TK-029 | WU-027 |
| TK-031 | ゲイン塔を 19.9 m 押し上げる | jack-mast-6 | 引き上げ 19.9 m | 2010-11-03 | 2010-11-04 | 2 | MT-05 | TK-030 | WU-026, WU-027 |
| TK-032 | ゲイン塔 第5節を吹き抜けの底に据える | set-mast-5 | 建てる | 2010-11-05 | 2010-11-11 | 6 | MT-05 | TK-031 | WU-028 |
| TK-033 | ゲイン塔を 19.9 m 押し上げる | jack-mast-5 | 引き上げ 19.9 m | 2010-11-12 | 2010-11-13 | 2 | MT-05 | TK-032 | WU-026, WU-027, WU-028 |
| TK-034 | ゲイン塔 第4節を吹き抜けの底に据える | set-mast-4 | 建てる | 2010-11-15 | 2010-11-20 | 6 | MT-05 | TK-033 | WU-029 |
| TK-035 | ゲイン塔を 19.9 m 押し上げる | jack-mast-4 | 引き上げ 19.9 m | 2010-11-22 | 2010-11-23 | 2 | MT-05 | TK-034 | WU-026, WU-027, WU-028, WU-029 |
| TK-036 | ゲイン塔 第3節を吹き抜けの底に据える | set-mast-3 | 建てる | 2010-11-24 | 2010-11-30 | 6 | MT-05 | TK-035 | WU-030 |
| TK-037 | ゲイン塔を 19.9 m 押し上げる | jack-mast-3 | 引き上げ 19.9 m | 2010-12-01 | 2010-12-02 | 2 | MT-05 | TK-036 | WU-026, WU-027, WU-028, WU-029, WU-030 |
| TK-038 | ゲイン塔 第2節を吹き抜けの底に据える | set-mast-2 | 建てる | 2010-12-03 | 2010-12-09 | 6 | MT-05 | TK-037 | WU-031 |
| TK-039 | ゲイン塔を 19.9 m 押し上げる | jack-mast-2 | 引き上げ 19.9 m | 2010-12-10 | 2010-12-11 | 2 | MT-05 | TK-038 | WU-026, WU-027, WU-028, WU-029, WU-030, WU-031 |
| TK-040 | ゲイン塔 第1節を吹き抜けの底に据える | set-mast-1 | 建てる | 2010-12-13 | 2010-12-18 | 6 | MT-05 | TK-039 | WU-032 |
| TK-041 | ゲイン塔を 99 m 引き上げる（1/5） | raise-1 | 引き上げ 99.0 m | 2010-12-20 | 2011-01-05 | 15 | MT-05 | TK-040 | WU-026, WU-027, WU-028, WU-029, WU-030, WU-031, WU-032 |
| TK-042 | ゲイン塔を 99 m 引き上げる（2/5） | raise-2 | 引き上げ 99.0 m | 2011-01-06 | 2011-01-22 | 15 | MT-05 | TK-041 | WU-026, WU-027, WU-028, WU-029, WU-030, WU-031, WU-032 |
| TK-043 | ゲイン塔を 99 m 引き上げる（3/5） | raise-3 | 引き上げ 99.0 m | 2011-01-24 | 2011-02-09 | 15 | MT-05 | TK-042 | WU-026, WU-027, WU-028, WU-029, WU-030, WU-031, WU-032 |
| TK-044 | ゲイン塔を 99 m 引き上げる（4/5） | raise-4 | 引き上げ 99.0 m | 2011-02-10 | 2011-02-26 | 15 | MT-05 | TK-043 | WU-026, WU-027, WU-028, WU-029, WU-030, WU-031, WU-032 |
| TK-045 | ゲイン塔を 99 m 引き上げる（5/5） | raise-5 | 引き上げ 99.0 m | 2011-02-28 | 2011-03-17 | 16 | MT-05 | TK-044 | WU-026, WU-027, WU-028, WU-029, WU-030, WU-031, WU-032 |
| TK-046 | 634 m 到達 | top | 節目 | 2011-03-18 | 2011-03-18 | 0 | MT-05 | TK-045 |  |
| TK-047 | タワークレーンの解体 | cranes-down | 建てる | 2011-03-19 | 2011-05-18 | 52 | MT-03 | TK-046 |  |
| TK-048 | 心柱 0–25 m（スリップフォーム） | pour-core-01 | 建てる | 2011-05-19 | 2011-05-28 | 9 | MT-06 | TK-047 | WU-033 |
| TK-049 | 心柱 25–50 m（スリップフォーム） | pour-core-02 | 建てる | 2011-05-30 | 2011-06-08 | 9 | MT-06 | TK-048 | WU-034 |
| TK-050 | 心柱 50–75 m（スリップフォーム） | pour-core-03 | 建てる | 2011-06-09 | 2011-06-18 | 9 | MT-06 | TK-049 | WU-035 |
| TK-051 | 心柱 75–100 m（スリップフォーム） | pour-core-04 | 建てる | 2011-06-20 | 2011-06-29 | 9 | MT-06 | TK-050 | WU-036 |
| TK-052 | 心柱 100–125 m（スリップフォーム） | pour-core-05 | 建てる | 2011-06-30 | 2011-07-09 | 9 | MT-06 | TK-051 | WU-037 |
| TK-053 | 心柱 125–150 m（スリップフォーム） | pour-core-06 | 建てる | 2011-07-11 | 2011-07-20 | 9 | MT-06 | TK-052 | WU-038 |
| TK-054 | 心柱 150–175 m（スリップフォーム） | pour-core-07 | 建てる | 2011-07-21 | 2011-07-30 | 9 | MT-06 | TK-053 | WU-039 |
| TK-055 | 心柱 175–200 m（スリップフォーム） | pour-core-08 | 建てる | 2011-08-01 | 2011-08-10 | 9 | MT-06 | TK-054 | WU-040 |
| TK-056 | 心柱 200–225 m（スリップフォーム） | pour-core-09 | 建てる | 2011-08-11 | 2011-08-20 | 9 | MT-06 | TK-055 | WU-041 |
| TK-057 | 心柱 225–250 m（スリップフォーム） | pour-core-10 | 建てる | 2011-08-22 | 2011-08-31 | 9 | MT-06 | TK-056 | WU-042 |
| TK-058 | 心柱 250–275 m（スリップフォーム） | pour-core-11 | 建てる | 2011-09-01 | 2011-09-10 | 9 | MT-06 | TK-057 | WU-043 |
| TK-059 | 心柱 275–300 m（スリップフォーム） | pour-core-12 | 建てる | 2011-09-12 | 2011-09-21 | 9 | MT-06 | TK-058 | WU-044 |
| TK-060 | 心柱 300–325 m（スリップフォーム） | pour-core-13 | 建てる | 2011-09-22 | 2011-10-01 | 9 | MT-06 | TK-059 | WU-045 |
| TK-061 | 心柱 325–350 m（スリップフォーム） | pour-core-14 | 建てる | 2011-10-03 | 2011-10-12 | 9 | MT-06 | TK-060 | WU-046 |
| TK-062 | 心柱 350–375 m（スリップフォーム） | pour-core-15 | 建てる | 2011-10-13 | 2011-10-22 | 9 | MT-06 | TK-061 | WU-047 |
| TK-063 | 350 m の展望台の床・ガラス・屋根 | deck1-fit | 建てる | 2011-05-19 | 2012-02-07 | 227 | MT-07 | TK-047 | WU-048 |
| TK-064 | 450 m の展望台の床・斜路・ガラス | deck2-fit | 建てる | 2011-05-27 | 2012-02-06 | 219 | MT-07 | TK-047 | WU-049 |
| TK-065 | 足元の建物 | podium | 建てる | 2009-06-02 | 2012-02-28 | 859 | MT-08 | TK-002 | WU-050 |
| TK-066 | 竣工 | finish | 節目 | 2012-02-29 | 2012-02-29 | 0 | MT-07 | TK-065, TK-063, TK-064, TK-062 |  |
